# Diesis#

Schedule from MS Project, 2016-02-25 to 2016-06-24, A marks actual dates.

## Calendars

- Standard: Mon-Fri 09:00-13:00, 14:00-18:00; Sat-Sun off.

## Resources

| Resource |
| --- |
| larovere vittorio |
| morisco gabriele |
| beggio luca |
| lanzi andrea |

## Schedule

| ID | WBS | Task | Type | Duration | Start | Finish | Predecessors | Complete | Remaining | Actual start | Total slack | Constraint | Resources | Work | Actual work |
| --- | --- | --- | --- | --- | --- | --- | --- | --- | --- | --- | --- | --- | --- | --- | --- |
| 1 | 1 | **Spartito XML** |  | 87d | 2016-02-25 A | 2016-06-24 |  | 96% | 3.25d |  |  |  |  | 1034h | 1002.8h |
| 2 | 1.1 | **applicazione desktop** |  | 71d | 2016-02-25 A | 2016-06-02 |  | 98% | 1.38d |  |  |  |  | 570h | 558.8h |
| 3 | 1.1.1 | **area utente** |  | 70d | 2016-02-25 A | 2016-06-01 |  | 98% | 1.38d |  | 17d |  |  | 560h | 548.8h |
| 4 | 1.1.1.1 | **sezione: registrazione tag** |  | 67d | 2016-02-25 A | 2016-05-27 |  | 99% | 0.41d |  | 0d |  |  | 528h | 524.8h |
| 5 | 1.1.1.1.1 | **Registratore** |  | 67d | 2016-02-25 A | 2016-05-27 |  | 99% | 0.41d |  | 0d |  |  | 528h | 524.8h |
| 6 | 1.1.1.1.1.1 | Gestore Timer | manual | 2d | 2016-04-20 A | 2016-04-21 |  | 80% | 0.4d |  |  | start no earlier than 2016-04-20 | beggio luca | 16h | 12.8h |
| 7 | 1.1.1.1.1.2 | Registrazione traccia |  | 1d | 2016-02-25 A | 2016-02-25 A | 43 | 100% |  |  |  |  | larovere vittorio | 8h | 8h |
| 8 | 1.1.1.1.1.3 | **Elaborazione Traccia** |  | 67d | 2016-02-25 A | 2016-05-27 A |  | 100% |  |  |  |  |  | 504h | 504h |
| 9 | 1.1.1.1.1.3.1 | Riconoscere frequenza singole note |  | 12d | 2016-02-25 A | 2016-03-11 A |  | 100% |  |  |  | finish no earlier than 2016-03-11 | morisco gabriele | 96h | 96h |
| 10 | 1.1.1.1.1.3.2 | Riconoscere durata singole note |  | 4d | 2016-02-25 A | 2016-03-01 A |  | 100% |  |  |  | start no earlier than 2016-02-24 | lanzi andrea | 32h | 32h |
| 11 | 1.1.1.1.1.3.3 | Richiamare tutto all'interno del programma |  | 1d | 2016-03-02 A | 2016-03-02 A | 33, 9 | 100% |  |  |  | start no earlier than 2016-03-02 | lanzi andrea | 8h | 8h |
| 12 | 1.1.1.1.1.3.4 | **Scrittura File XML** |  | 50d | 2016-03-21 A | 2016-05-27 A |  | 100% |  |  |  |  |  | 368h | 368h |
| 13 | 1.1.1.1.1.3.4.1 | Parser in music XML |  | 40d | 2016-03-21 A | 2016-05-13 A | 11 | 100% |  |  |  | start no earlier than 2016-03-19 | lanzi andrea | 320h | 320h |
| 14 | 1.1.1.1.1.3.4.2 | Inviare a server (upload) |  | 6d | 2016-05-20 A | 2016-05-27 A | 13 | 100% |  |  |  | start no earlier than 2016-05-20 | lanzi andrea | 48h | 48h |
| 15 | 1.1.1.2 | **sezione: credenziali utente (richiama WebMethod)** |  | 1d | 2016-05-18 | 2016-05-18 A |  | 100% |  | 2016-03-16 |  |  |  | 8h | 8h |
| 16 | 1.1.1.2.1 | cambiamento email |  | 0.5d | 2016-03-16 A | 2016-03-16 A |  | 100% |  |  |  | start no earlier than 2016-03-16 | beggio luca | 4h | 4h |
| 17 | 1.1.1.2.2 | cambiamento password |  | 0.5d | 2016-05-18 A | 2016-05-18 A | 16 | 100% |  |  |  |  | beggio luca | 4h | 4h |
| 18 | 1.1.1.3 | **sezione: visualizzazione tag** |  | 3d | 2016-05-30 A | 2016-06-01 |  | 75% | 0.75d |  |  |  |  | 24h | 16h |
| 19 | 1.1.1.3.1 | Filtro in base al genere | manual | 1d | 2016-05-30 A | 2016-05-30 A |  | 100% |  |  |  |  |  |  |  |
| 20 | 1.1.1.3.2 | Filtro in base al nome |  | 1d | 2016-05-30 A | 2016-05-30 A |  | 100% |  |  |  |  | lanzi andrea | 8h | 8h |
| 21 | 1.1.1.3.3 | Visualizza elenco files |  | 1d | 2016-05-31 A | 2016-05-31 A |  | 100% |  |  |  | start no earlier than 2016-05-31 | lanzi andrea | 8h | 8h |
| 22 | 1.1.1.3.4 | Scarica file singolo |  | 1d | 2016-06-01 | 2016-06-01 |  |  |  |  | 17d | start no earlier than 2016-06-01 | lanzi andrea | 8h |  |
| 23 | 1.1.2 | **area login (richiama WebMethod)** |  | 1d | 2016-05-26 A | 2016-05-26 A |  | 100% |  |  |  |  |  | 3h | 3h |
| 24 | 1.1.2.1 | login (implementazione) |  | 1h | 2016-05-26 A | 2016-05-26 A |  | 100% |  |  |  | start no earlier than 2016-03-04 | lanzi andrea | 1h | 1h |
| 25 | 1.1.2.2 | registrazione nuovo utente (implementazione) |  | 1h | 2016-05-26 A | 2016-05-26 A |  | 100% |  |  |  |  | lanzi andrea | 1h | 1h |
| 26 | 1.1.2.3 | password dimenticata (implementazione) |  | 1h | 2016-05-26 A | 2016-05-26 A | 30 | 100% |  |  |  |  | lanzi andrea | 1h | 1h |

| ID | WBS | Task | Type | Duration | Start | Finish | Predecessors | Complete | Remaining | Actual start | Actual finish | Total slack | Constraint | Resources | Work | Actual work |
| --- | --- | --- | --- | --- | --- | --- | --- | --- | --- | --- | --- | --- | --- | --- | --- | --- |
| 27 | 1.1.3 | **GUI** |  | 9d | 2016-03-03 A | 2016-03-15 |  | 100% |  |  | 2016-03-14 |  |  |  | 7h | 7h |
| 28 | 1.1.3.1 | sezione login |  | 1h | 2016-03-03 A | 2016-03-03 A |  | 100% |  |  |  |  | start no earlier than 2016-03-03 | beggio luca; lanzi andrea | 1h | 1h |
| 29 | 1.1.3.2 | nuovo registrazione nuovo utente |  | 1h | 2016-03-08 A | 2016-03-08 A |  | 100% |  |  |  |  |  | beggio luca; lanzi andrea | 1h | 1h |
| 30 | 1.1.3.3 | sezione password dimenticata |  | 1h | 2016-03-10 A | 2016-03-10 A |  | 100% |  |  |  |  |  | beggio luca; lanzi andrea | 1h | 1h |
| 31 | 1.1.3.4 | sezione credenziali |  | 1h | 2016-03-14 A | 2016-03-14 A | 26 | 100% |  |  |  |  |  | beggio luca; lanzi andrea | 1h | 1h |
| 32 | 1.1.3.5 | sezione registrazione |  | 1h | 2016-03-14 A | 2016-03-14 A |  | 100% |  |  |  |  |  | beggio luca; lanzi andrea | 1h | 1h |
| 33 | 1.1.3.6 | sezione visualizza |  | 1h | 2016-03-03 A | 2016-03-03 A |  | 100% |  |  |  |  |  | beggio luca; lanzi andrea | 2h | 2h |
| 35 | 1.2 | **applicazione web** |  | 83d | 2016-02-25 | 2016-06-20 |  | 96% | 3.58d | 2016-03-14 |  |  |  |  | 464h | 444h |
| 36 | 1.2.1 | **Ricerca utenti** |  | 4d | 2016-05-27 A | 2016-06-01 A |  | 100% |  |  |  |  |  |  | 28h | 28h |
| 37 | 1.2.1.1 | Visualizza utenti | manual | 1d | 2016-05-27 A | 2016-05-27 A |  | 100% |  |  |  |  |  | morisco gabriele | 8h | 8h |
| 38 | 1.2.1.2 | Filtra per username | manual | 1d | 2016-05-30 A | 2016-05-30 A |  | 100% |  |  |  |  |  | morisco gabriele | 8h | 8h |
| 39 | 1.2.1.3 | Filtra per nome e cognome | manual | 1d | 2016-05-31 A | 2016-05-31 A |  | 100% |  |  |  |  |  | morisco gabriele | 8h | 8h |
| 40 | 1.2.1.4 | Visualizza profilo utente singolo | manual | 0.5d | 2016-06-01 A | 2016-06-01 A |  | 100% |  |  |  |  |  | morisco gabriele | 4h | 4h |
| 41 | 1.2.2 | **Area utente** |  | 60d | 2016-03-14 A | 2016-06-03 |  | 98% | 1.07d |  |  | 15d |  |  | 224h | 220h |
| 42 | 1.2.2.1 | **sezione: credenziali utente** |  | 4d | 2016-05-27 A | 2016-06-01 |  | 100% |  |  | 2016-05-31 |  |  |  | 24h | 24h |
| 43 | 1.2.2.1.1 | cambiamento email |  | 2d | 2016-05-30 A | 2016-05-31 A | 44 | 100% |  |  |  |  | start no earlier than 2016-02-25 | larovere vittorio | 16h | 16h |
| 44 | 1.2.2.1.2 | cambiamento password |  | 1d | 2016-05-27 A | 2016-05-27 A | 61 | 100% |  |  |  |  |  | larovere vittorio | 8h | 8h |
| 45 | 1.2.2.2 | **sezione: visualizzazione tag (biblioteca xml)** |  | 41d | 2016-04-10 | 2016-06-03 |  | 94% | 2.56d | 2016-03-14 |  |  |  |  | 64h | 60h |
| 46 | 1.2.2.2.1 | Visualizza elenco files |  | 2d | 2016-03-14 A | 2016-03-15 A |  | 100% |  |  |  |  | start no earlier than 2016-03-14 | morisco gabriele | 16h | 16h |
| 47 | 1.2.2.2.2 | Filtro in base al genere | manual | 4d | 2016-04-12 A | 2016-04-15 A |  | 100% |  |  |  |  |  | morisco gabriele | 32h | 32h |
| 48 | 1.2.2.2.3 | Scarica file singolo |  | 1d | 2016-04-16 A | 2016-04-18 |  | 50% | 0.5d |  |  | 49d |  | morisco gabriele | 8h | 4h |
| 49 | 1.2.2.2.4 | Filtro in base al titolo | manual | 1d | 2016-06-03 A | 2016-06-03 A |  | 100% |  |  |  |  |  | morisco gabriele | 8h | 8h |
| 50 | 1.2.2.3 | **area login** |  | 41d | 2016-03-24 A | 2016-05-19 A |  | 100% |  |  |  |  |  |  | 136h | 136h |
| 51 | 1.2.2.3.1 | login (implementazione) |  | 15d | 2016-03-24 A | 2016-05-18 A | 57 | 100% |  |  |  |  | finish no earlier than 2016-04-07 | larovere vittorio; morisco gabriele | 120h | 120h |
| 52 | 1.2.2.3.2 | password dimenticata (implementazione) |  | 1d | 2016-04-08 A | 2016-04-08 A | 59 | 100% |  |  |  |  |  | larovere vittorio | 8h | 8h |

| ID | WBS | Task | Type | Duration | Start | Finish | Predecessors | Complete | Remaining | Actual start | Actual finish | Constraint | Resources | Work | Actual work |
| --- | --- | --- | --- | --- | --- | --- | --- | --- | --- | --- | --- | --- | --- | --- | --- |
| 53 | 1.2.2.3.3 | **registrazione nuovo utente (implementazione)** |  | 41d | 2016-03-24 A | 2016-05-19 A | 58 | 100% |  |  |  |  |  | 8h | 8h |
| 54 | 1.2.2.3.3.1 | Inserimento nel DB | manual | 0.5d | 2016-03-24 A | 2016-03-24 A |  | 100% |  |  |  |  | larovere vittorio | 4h | 4h |
| 55 | 1.2.2.3.3.2 | Verifica disponibilità username & e-mail | manual | 0.5d | 2016-05-19 A | 2016-05-19 A |  | 100% |  |  |  |  | morisco gabriele | 4h | 4h |
| 56 | 1.2.3 | **GUI** |  | 58d | 2016-03-31 | 2016-06-20 |  | 92% | 4.38d | 2016-03-16 |  |  |  | 212h | 196h |
| 57 | 1.2.3.1 | sezione login | manual | 1d | 2016-04-04 A | 2016-04-04 A |  | 100% |  |  |  | finish no earlier than 2016-04-28 | larovere vittorio | 8h | 8h |
| 58 | 1.2.3.2 | nuovo registrazione nuovo utente | manual | 1d | 2016-04-19 A | 2016-04-19 A |  | 100% |  |  |  | finish no earlier than 2016-04-08 | larovere vittorio | 8h | 8h |
| 59 | 1.2.3.3 | sezione password dimenticata | manual | 4d | 2016-03-21 A | 2016-03-28 A |  | 100% |  |  |  | start no earlier than 2016-03-23 | morisco gabriele | 32h | 32h |
| 60 | 1.2.3.4 | AreaUtente - modifica password | manual | 3d | 2016-04-01 A | 2016-04-05 A |  | 100% |  |  |  |  | morisco gabriele | 24h | 24h |
| 61 | 1.2.3.5 | AreaUtente - modifica email | manual | 3d | 2016-03-29 A | 2016-03-31 A | 52 | 100% |  |  |  | start no earlier than 2016-03-29 | morisco gabriele | 24h | 24h |
| 62 | 1.2.3.6 | Sezione visualizza | manual | 5d | 2016-03-16 A | 2016-03-22 A |  | 100% |  |  |  | start no earlier than 2016-03-16 | morisco gabriele | 40h | 40h |
| 63 | 1.2.3.7 | Sezione biblioteca | manual | 4d | 2016-04-06 A | 2016-04-11 A |  | 100% |  |  |  |  | morisco gabriele | 32h | 32h |
| 64 | 1.2.3.8 | Sezione elenco utenti | manual | 3d | 2016-05-20 A | 2016-05-24 A |  | 100% |  |  |  |  | morisco gabriele | 24h | 24h |
| 65 | 1.2.3.9 | Profili utenti | manual | 0.5d | 2016-06-01 A | 2016-06-01 A |  | 100% |  |  |  |  | morisco gabriele | 4h | 4h |
| 66 | 1.2.3.10 | Popup Login | manual | 1d | 2016-06-10 | 2016-06-10 |  |  |  |  |  |  | larovere vittorio | 8h |  |
| 67 | 1.2.3.11 | Contatti | manual | 1d | 2016-03-31 | 2016-03-31 |  |  |  |  |  |  | larovere vittorio | 8h |  |
| 68 | 2 | **Server:** |  | 44d | 2016-04-11 A | 2016-06-09 |  | 100% |  |  | 2016-06-08 |  |  | 128h | 128h |
| 69 | 2.1 | **Web Service (Web Method):** |  | 44d | 2016-04-11 A | 2016-06-09 |  | 100% |  |  | 2016-06-08 |  |  | 64h | 64h |
| 70 | 2.1.1 | Autenticazione | manual | 1d | 2016-04-11 A | 2016-04-11 A | 14 | 100% |  |  |  | start no earlier than 2016-04-11 | beggio luca | 8h | 8h |
| 71 | 2.1.2 | Aggiunta nuovo utente | manual | 1d | 2016-04-12 A | 2016-04-12 A |  | 100% |  |  |  |  | beggio luca | 8h | 8h |
| 72 | 2.1.3 | Recupero Password | manual | 2d | 2016-04-13 A | 2016-04-14 A |  | 100% |  |  |  |  | beggio luca | 16h | 16h |
| 73 | 2.1.4 | Modifica E-mail | manual | 1d | 2016-05-16 A | 2016-05-16 A |  | 100% |  |  |  |  | beggio luca | 8h | 8h |
| 74 | 2.1.5 | Modifica Password | manual | 1d | 2016-05-17 A | 2016-05-17 A |  | 100% |  |  |  |  | beggio luca | 8h | 8h |
| 75 | 2.1.6 | Ricezione - Risposta Visualizzazione files | manual | 1d | 2016-04-15 A | 2016-04-15 A |  | 100% |  |  |  |  | beggio luca | 8h | 8h |
| 76 | 2.1.7 | Controllo nome file | manual | 1d | 2016-06-08 A | 2016-06-08 A |  | 100% |  |  |  |  | beggio luca | 8h | 8h |

| ID | WBS | Task | Type | Duration | Start | Finish | Complete | Total slack | Resources | Work | Actual work |
| --- | --- | --- | --- | --- | --- | --- | --- | --- | --- | --- | --- |
| 77 | 2.2 | **Installazione Windows Server** |  | 6d | 2016-05-16 A | 2016-05-23 A | 100% |  |  | 64h | 64h |
| 78 | 2.2.1 | Installazione Web Server | manual | 1d | 2016-05-16 A | 2016-05-16 A | 100% |  | lanzi andrea | 8h | 8h |
| 79 | 2.2.2 | Installazione Web Services | manual | 4d | 2016-05-16 A | 2016-05-19 A | 100% |  | lanzi andrea | 32h | 32h |
| 80 | 2.2.3 | Installazione Database | manual | 2d | 2016-05-20 A | 2016-05-23 A | 100% |  | lanzi andrea | 16h | 16h |
| 81 | 2.2.4 | Installazione servizio FTP | manual | 1d | 2016-05-16 A | 2016-05-16 A | 100% |  | lanzi andrea | 8h | 8h |
| 82 | 3 | **Documentazione** |  | 1d | 2016-02-25 | 2016-02-25 |  | 0d |  | 56h |  |
| 83 | 3.1 | WBS | manual | 1d | 2016-02-25 | 2016-02-25 |  |  | lanzi andrea | 8h |  |
| 84 | 3.2 | Depliant | manual | 1d | 2016-02-25 | 2016-02-25 |  |  | larovere vittorio | 8h |  |
| 85 | 3.3 | Manuale Utente | manual | 1d | 2016-02-25 | 2016-02-25 |  |  | larovere vittorio | 8h |  |
| 86 | 3.4 | Diagramma Classi | manual | 1d | 2016-02-25 | 2016-02-25 |  |  | larovere vittorio | 8h |  |
| 87 | 3.5 | Risorse HW / SW | manual | 1d | 2016-02-25 | 2016-02-25 |  |  | larovere vittorio | 8h |  |
| 88 | 3.6 | Casi D'uso | manual | 1d | 2016-02-25 | 2016-02-25 |  |  | larovere vittorio | 8h |  |
| 89 | 3.7 | ER | manual | 1d | 2016-02-25 | 2016-02-25 |  |  | lanzi andrea | 8h |  |
